# Simple Project Plan

Schedule from MS Project, 2020-04-08 to 2020-06-30.

## Calendars

- Standard: Mon-Fri 08:00-12:00, 13:00-17:00; Sat-Sun off. Exceptions (off unless hours are given): 2020-05-01 to 2020-05-05 (五一假期).

## Schedule

| ID | WBS | Task | Duration | Start | Finish | Predecessors | Total slack | Free slack |
| --- | --- | --- | --- | --- | --- | --- | --- | --- |
| 1 | 1 | **可视化平台** | 57d | 2020-04-08 | 2020-06-30 |  | 0d |  |
| 2 | 1.1 | **平台前端开发** | 25d | 2020-04-08 | 2020-05-15 |  | 32d |  |
| 3 | 1.1.1 | **产品品类页面** | 2d | 2020-04-08 | 2020-04-09 |  | 32d | 0d |
| 4 | 1.1.1.1 | 模板数据获取并分页显示(数据获取，数据格式) | 1d | 2020-04-08 | 2020-04-08 |  | 30d | 0d |
| 5 | 1.1.1.2 | 模板根据产品字段进行分类 | 0.5d | 2020-04-09 | 2020-04-09 | 4 | 30d | 0d |
| 6 | 1.1.1.3 | 模板关键字搜索 | 0.5d | 2020-04-09 | 2020-04-09 | 5 | 30d |  |
| 7 | 1.1.2 | **创建产品基本信息页面** | 4d | 2020-04-10 | 2020-04-15 | 3 | 32d | 0d |
| 8 | 1.1.2.1 | 产品创建进度显示功能 | 1d | 2020-04-10 | 2020-04-10 |  | 30d | 0d |
| 9 | 1.1.2.2 | 产品信息表单 | 0.5d | 2020-04-13 | 2020-04-13 | 8 | 30d | 0d |
| 10 | 1.1.2.3 | 根据品类筛选出模板列表，并包含每个模板的快照图片以及配置参数信息，做成轮播器展示 | 2d | 2020-04-13 | 2020-04-15 | 9 | 30d | 0d |
| 11 | 1.1.2.4 | 选择模板跳转页面需携带模板id等参数 | 0.5d | 2020-04-15 | 2020-04-15 | 10 | 30d |  |
| 12 | 1.1.3 | **H5功能配置预览页面** | 13d | 2020-04-16 | 2020-05-07 | 7 | 32d | 0d |
| 13 | 1.1.3.1 | 添加新功能（枚举、布尔、连续3种类型） | 2.5d | 2020-04-16 | 2020-04-20 |  | 30d | 0d |
| 14 | 1.1.3.2 | 预览模式/编辑模式、上一页/下一页 | 1.5d | 2020-04-20 | 2020-04-21 | 13 | 30d | 0d |
| 15 | 1.1.3.3 | 根据模板id在iframe中加载对应的模板，以及模板基本功能信息（profile，string），云功能信息，互斥配置信息（互斥填写表单功能，互斥展示列表） | 7d | 2020-04-22 | 2020-04-30 | 14 | 30d | 0d |
| 16 | 1.1.3.4 | 模板组件schema信息通过JSON-editor展示，并与模板交互组件schema实例（全局组件配置以及选中组件配置） | 2d | 2020-05-06 | 2020-05-07 | 15 | 30d |  |
| 17 | 1.1.4 | **国际化语音页面** | 5d | 2020-05-08 | 2020-05-14 | 12 | 32d | 0d |
| 18 | 1.1.4.1 | 语种新增表单功能 | 1.5d | 2020-05-08 | 2020-05-11 |  | 30d | 0d |
| 19 | 1.1.4.2 | 语种选择配置 | 0.5d | 2020-05-11 | 2020-05-11 | 18 | 30d | 0d |
| 20 | 1.1.4.3 | 产品功能表单功能 | 2d | 2020-05-12 | 2020-05-13 | 19 | 30d | 0d |
| 21 | 1.1.4.4 | 生成国际化文件或者国际化JSON传给模板 | 1d | 2020-05-14 | 2020-05-14 | 20 | 30d |  |
| 22 | 1.1.5 | **UI包下载页面** | 1d | 2020-05-15 | 2020-05-15 | 17 | 32d |  |
| 23 | 1.1.5.1 | 点击下载产品UI的zip压缩包，完成配置，返回品类首页 | 1d | 2020-05-15 | 2020-05-15 |  | 30d |  |
| 24 | 1.2 | **模板开发** | 57d | 2020-04-08 | 2020-06-30 |  | 0d |  |
| 25 | 1.2.1 | 主题色功能 | 3d | 2020-04-08 | 2020-04-10 |  | 0d |  |
| 26 | 1.2.2 | 只读组件开发 | 3d | 2020-04-13 | 2020-04-15 | 25 | 0d |  |
| 27 | 1.2.3 | 功能设置界面 | 3d | 2020-04-16 | 2020-04-20 | 26 | 0d |  |
| 28 | 1.2.4 | 连续组件-滑竿 | 2d | 2020-06-02 | 2020-06-03 | 36 | 0d |  |
| 29 | 1.2.5 | 连续组件-选择器 | 2d | 2020-06-04 | 2020-06-05 | 28 | 0d |  |
| 30 | 1.2.6 | 连续组件-加减器 | 2d | 2020-06-08 | 2020-06-09 | 29 | 0d |  |
| 31 | 1.2.7 | 定时与场景功能整合 | 5d | 2020-06-10 | 2020-06-16 | 30 | 0d |  |
| 32 | 1.2.8 | 功能设置界面 | 2d | 2020-06-17 | 2020-06-18 | 31 | 0d |  |
| 33 | 1.2.9 | 国际化模块 | 3d | 2020-06-19 | 2020-06-23 | 32 | 0d |  |
| 34 | 1.2.10 | 互斥模块 | 3d | 2020-06-24 | 2020-06-26 | 33 | 0d |  |
| 35 | 1.2.11 | 自定义打包脚本 | 2d | 2020-06-29 | 2020-06-30 | 34 | 0d |  |

Notes:
- 1: 这是摘要任务。使用摘要任务以帮助您在节中组织项目。
- 26: 在其旁边带有图钉的任务为手动计划任务。当您不想让 Project 移动任务时请使用它们。如果您尚未获得所有信息，您也可以在工期、开始和完成字段输入任意文本或将其保留为空。

| ID | WBS | Task | Type | Duration | Start | Finish | Predecessors | Total slack |
| --- | --- | --- | --- | --- | --- | --- | --- | --- |
| 36 | 1.3 | **服务端开发** |  | 27d | 2020-04-21 | 2020-06-01 | 27 | 0d |
| 37 | 1.3.1 | 模板列表接口 |  | 3d | 2020-04-21 | 2020-04-23 |  | 0d |
| 38 | 1.3.2 | 添加产品接口 |  | 4d | 2020-04-24 | 2020-04-29 | 37 | 0d |
| 39 | 1.3.3 | 保存产品接口 |  | 3d | 2020-04-30 | 2020-05-07 | 38 | 0d |
| 40 | 1.3.4 | 下载产品打包 |  | 3d | 2020-05-08 | 2020-05-12 | 39 | 0d |
| 41 | 1.3.5 | UI下载 |  | 2d | 2020-05-13 | 2020-05-14 | 40 | 0d |
| 42 | 1.3.6 | V1.0发布 | milestone | 0d | 2020-05-14 | 2020-05-14 | 41 | 0d |
| 43 | 1.3.7 | 国际化接口 |  | 4d | 2020-05-15 | 2020-05-20 | 42 | 0d |
| 44 | 1.3.8 | 互斥接口 |  | 4d | 2020-05-21 | 2020-05-26 | 43 | 0d |
| 45 | 1.3.9 | 云功能定义 |  | 4d | 2020-05-27 | 2020-06-01 | 44 | 0d |
| 46 | 1.3.10 | V2.0 | milestone | 0d | 2020-06-01 | 2020-06-01 | 45 | 0d |
